"Task ID","Task","Duration (days)","Team","Allocated units","Dependencies","Optimized start","Optimized finish","Baseline start","CPM early start (day)","CPM slack (days)","Fixed cost EUR","Resource cost EUR","Total cost EUR","Notes"
"T16","Asset inventory & labeling","5","Engineering","2","","16 Nov 2026","20 Nov 2026","26 Oct 2026","0","37","800","5200","6000",""
"T01","Site survey","4","Engineering","1","","26 Oct 2026","29 Oct 2026","2 Nov 2026","0","0","0","2080","2080",""
"T02","Requirements & scope","3","Engineering","1","","26 Oct 2026","28 Oct 2026","2 Nov 2026","0","1","0","1560","1560",""
"T03","Preliminary layout","6","Engineering","2","T01; T02","30 Oct 2026","6 Nov 2026","6 Nov 2026","4","0","0","6240","6240",""
"T04","Permit documentation","5","Engineering","1","T03","9 Nov 2026","13 Nov 2026","16 Nov 2026","10","1","0","2600","2600",""
"T05","Foundation design","5","Engineering","1","T03","9 Nov 2026","13 Nov 2026","16 Nov 2026","10","0","0","2600","2600",""
"T06","Steel procurement","3","Procurement","1","T05","16 Nov 2026","18 Nov 2026","23 Nov 2026","15","0","2200","1065","3265",""
"T07","Electrical procurement","4","Procurement","1","T03","9 Nov 2026","12 Nov 2026","16 Nov 2026","10","15","3100","1420","4520",""
"T08","Steel delivery lead-time","9","Procurement","1","T06","19 Nov 2026","1 Dec 2026","26 Nov 2026","18","0","0","3195","3195",""
"T09","Site preparation","4","Civil crew","2","T04","16 Nov 2026","19 Nov 2026","23 Nov 2026","15","1","0","3680","3680",""
"T10","Foundation works","7","Civil crew","2","T09","20 Nov 2026","30 Nov 2026","27 Nov 2026","19","1","4500","6440","10940",""
"T11","Steelwork assembly","6","Civil crew","2","T08; T10","2 Dec 2026","9 Dec 2026","9 Dec 2026","27","0","1700","5520","7220",""
"T12","Cable routing","4","Electrical crew","2","T07; T09","20 Nov 2026","25 Nov 2026","27 Nov 2026","19","10","0","4440","4440",""
"T13","Electrical installation","6","Electrical crew","2","T11; T12","10 Dec 2026","17 Dec 2026","17 Dec 2026","33","0","0","6660","6660",""
"T14","Functional testing","3","Inspection & QA","1","T13","18 Dec 2026","22 Dec 2026","25 Dec 2026","39","0","0","1740","1740",""
"T15","Handover documentation","2","Engineering","1","T14; T16","23 Dec 2026","24 Dec 2026","30 Dec 2026","42","0","0","1040","1040",""
